# Sanjeeda.io — OfferGuide & PGP Modules

Schedule from MS Project XML, 2026-04-13 to 2026-10-28, A marks actual dates.
Status, remaining work and proposed screens

## Calendars

- Standard: Mon-Fri 08:00-12:00, 13:00-17:00; Sat-Sun off.

## Schedule

| ID | WBS | Task | Type | Duration | Start | Finish | Predecessors | Complete | Remaining | Total slack | Constraint |
| --- | --- | --- | --- | --- | --- | --- | --- | --- | --- | --- | --- |
| 1 | 1 | **OFFERGUIDE MODULE (og.sanjeeda.io/offerguide)** |  | 55d | 2026-07-20 A | 2026-10-02 |  | 65% | 19.25d | 0d |  |
| 2 | 1.1 | **A. Built & verified — Sprints 1–10 (100% complete)** |  | 43d | 2026-07-20 A | 2026-09-16 A |  | 100% |  |  |  |
| 3 | 1.1.1 | OfferGuide kick-off — Sprint 1 handoff | milestone | 0d | 2026-07-20 A | 2026-07-20 A |  | 100% |  |  | must start on 2026-07-20 |
| 4 | 1.1.2 | Sprint 1 — Tooling & scaffold (Prisma, Swagger UI /api-docs, shadcn, folder scaffold) |  | 7d | 2026-07-20 A | 2026-07-28 A | 3 | 100% |  |  |  |
| 5 | 1.1.3 | Sprint 2 — Theming & shared UI (ThemeProvider light/dark/system, dark tokens, 11 shadcn components, nav entry) |  | 2d | 2026-07-29 A | 2026-07-30 A | 4 | 100% |  |  |  |
| 6 | 1.1.4 | Sprint 3 — Mongo config collections & seed (OgQuestions, OgScoringConfig, OgGeography, OgMarketBenchmarks, OgFunctionalDomains, OgConsentToggles, WizardDraft) |  | 3d | 2026-07-31 A | 2026-08-04 A | 5 | 100% |  |  |  |
| 7 | 1.1.5 | Sprint 4 — Candidate API: 4.1 Profile & Session, 4.2 Offers & Wizard Draft, 4.3 Config reads (public) |  | 3d | 2026-08-05 A | 2026-08-07 A | 6 | 100% |  |  |  |
| 8 | 1.1.6 | Sprint 5 — Scoring engine, compute-score / score / compare endpoints, admin config API (30 ops) + interim admin gate |  | 3d | 2026-08-10 A | 2026-08-12 A | 7 | 100% |  |  |  |
| 9 | 1.1.7 | Sprint 6 — Wizard part 1: SCR-000 Landing, SCR-001 Profile (24 fields), SCR-002 Setup, SCR-003 Offer, SCR-004 Compensation, SCR-005 Benefits |  | 3d | 2026-08-13 A | 2026-08-17 A | 8 | 100% |  |  |  |
| 10 | 1.1.8 | Sprint 7 — Wizard part 2: SCR-006 Work-Life, SCR-007 Growth, SCR-008 Culture, SCR-009 Compare, SCR-010 Results + HelpIcon |  | 7d | 2026-08-18 A | 2026-08-26 A | 9 | 100% |  |  |  |
| 11 | 1.1.9 | Sprint 8 — Integration & QA: contract test (openapi.yaml ⇄ routes), golden fixtures, Swagger auth badges, 54-op contract |  | 2d | 2026-08-27 A | 2026-08-28 A | 10 | 100% |  |  |  |
| 12 | 1.1.10 | Sprint 9 — RBAC & permissions: role column + migrate-roles script, requireAdmin, proxy.ts identity headers, permission map, auth regression script |  | 4d | 2026-08-31 A | 2026-09-03 A | 11 | 100% |  |  |  |
| 13 | 1.1.11 | Sprint 10 — Admin Configuration UI: 10.7 scoring fix, 10.1 shell, 10.3/10.6 Questions (+yesno removal), 10.4 Benchmarks, 10.5 Geo/Domains/Toggles, 10.2 Scoring activate/preview |  | 6d | 2026-09-04 A | 2026-09-11 A | 12 | 100% |  |  |  |
| 14 | 1.1.12 | Post-sprint polish — og.sanjeeda.io domain, NEXT_PUBLIC_SHOW_OFFERGUIDE flag, header 'New' promo, palette picker (Modern/Playful), explainer video |  | 3d | 2026-09-14 A | 2026-09-16 A | 13 | 100% |  |  |  |
| 15 | 1.2 | **B. OfferGuide QA Report — Sir Jamil (16 Sep 2026, og.sanjeeda.io)** |  | 9d | 2026-09-16 A | 2026-09-28 |  | 46% | 4.88d | 0d |  |
| 16 | 1.2.1 | QA report received — 5 single-offer + 5 multi-offer findings | milestone | 0d | 2026-09-16 A | 2026-09-16 A |  | 100% |  |  | must start on 2026-09-16 |
| 17 | 1.2.2 | B2 (Critical) — Phantom blank 'Offer B' attached to session without user action |  | 2d | 2026-09-17 A | 2026-09-18 | 16 | 80% | 0.38d | 0d |  |
| 18 | 1.2.3 | A2 (High) — Base salary placeholder looked like a real value |  | 1d | 2026-09-17 A | 2026-09-17 | 16 | 80% | 0.25d | 0d |  |
| 19 | 1.2.4 | A1 (High) — Stepper breadcrumb not clickable |  | 2d | 2026-09-17 A | 2026-09-18 | 16 | 80% | 0.38d | 0d |  |
| 20 | 1.2.5 | B1 (High) — No way to start a fresh evaluation (session locked server-side) |  | 1d | 2026-09-17 A | 2026-09-17 | 16 | 80% | 0.25d | 0d |  |
| 21 | 1.2.6 | A3 (Medium) — 5–9 s 'Saving… / Loading…' on every step transition |  | 3d | 2026-09-17 A | 2026-09-21 | 16 | 50% | 1.5d | 0d |  |
| 22 | 1.2.7 | B4 (Medium) — Salary score identical for 150K vs 200K base |  | 1d | 2026-09-17 A | 2026-09-17 | 16 | 80% | 0.25d | 0d |  |
| 23 | 1.2.8 | B5 (Low) — Market Intelligence panel does not say which offer it describes |  | 1d | 2026-09-17 A | 2026-09-17 | 16 | 80% | 0.25d | 0d |  |
| 24 | 1.2.9 | OfferGuide plan baseline — open items scheduled from here | milestone | 0d | 2026-09-21 A | 2026-09-21 A |  | 100% |  |  | must start on 2026-09-21 |
| 25 | 1.2.10 | A4 (Medium) — Console SyntaxError 'Unexpected identifier s' at /offerguide:0:3889 (inline script) |  | 1d | 2026-09-21 | 2026-09-21 | 24 |  |  | 0d |  |
| 26 | 1.2.11 | A5 (Low, intermittent) — Blue overflow band at viewport edge during transitions / theme toggle |  | 1d | 2026-09-21 | 2026-09-21 | 24 |  |  | 0d |  |
| 27 | 1.2.12 | Commit & push QA-fix branch; run full suite (617+ tests), tsc, eslint; update openapi.yaml if any route changed |  | 1d | 2026-09-22 | 2026-09-22 | 17, 18, 19, 20, 21, 22, 23, 25, 26 |  |  | 0d |  |
| 28 | 1.2.13 | Deploy to og.sanjeeda.io (NEXT_PUBLIC_SHOW_OFFERGUIDE=true) + smoke test |  | 1d | 2026-09-23 | 2026-09-23 | 27 |  |  | 0d |  |
| 29 | 1.2.14 | QA re-test by Sir Jamil — single-offer + multi-offer regression against the 10 findings |  | 2d | 2026-09-24 | 2026-09-25 | 28 |  |  | 0d |  |
| 30 | 1.2.15 | OfferGuide QA sign-off | milestone | 0d | 2026-09-28 | 2026-09-28 | 29 |  |  | 0d |  |

Notes:
- 3: Milestone. Sprint 1 handoff pack (OG_Sprint1_Handoff_v1_0.pdf, API_SETUP_GUIDE, NAMING_CONVENTIONS).
- 4: DONE. Source: OFFERGUIDE_SPRINT1_CHECKLIST.md. Prisma pointed at existing MySQL (user_management), Swagger UI at /api-docs, shadcn pinned to Tailwind v3, src/app/offerguide/{_components,_state,_constants} + src/app/api/offerguide scaffold.
- 5: DONE. Source: OFFERGUIDE_SPRINT2_DOD_CHECKLIST.md (4/5 code-complete, item 5 = PR review gate). Follow-up 'approved dark tokens from Jamil' was later superseded by the palette work (Modern + Playful palettes, Sep 15–16).
- 6: DONE. Source: Offer Guide Sprints/Sprint3 (schema.prisma, seed-offerguide.js, 7 Mongoose models). Prisma models CandidateProfile, EvaluationSession, Offer + 5 sub-sections + OfferScore.
- 7: DONE. Source: OFFERGUIDE_SPRINT4_DOD_CHECKLIST.md. Guest identity via httpOnly guestToken cookie, JWT bearer path, live enum validation against OgQuestions, ownership 404s, wizard-draft PUT/GET/DELETE.
- 8: DONE. Source: OG_Sprint5_Handoff_v1_0.pdf, src/lib/offerguide/scoring/*. Config-driven scoring, Salary via market-percentile formula, golden fixtures A–D.
- 9: DONE. Source: OFFERGUIDE_SPRINT6_PLAN_AND_CHECKLIST.md (130/141 checked; the open lines — registered-JWT path — were exercised in Sprint 8/9). WizardShell, ModuleStepper, SectionStepper, BottomNav, field primitives, autosave draft.
- 10: DONE in code (src/app/offerguide/wizard/{work-life,growth,culture,compare,results}). The Sprint 7 checklist .md was not ticked after build (47/113) — the pages, strengths/watch-outs/next-steps, winner badge and market panel empty states all exist and are covered by tests.
- 11: DONE (automated part). Source: OFFERGUIDE_SPRINT8_PLAN_AND_CHECKLIST.md 16/22. The manual QA sheet (OFFERGUIDE_SPRINT8_MANUAL_QA.md Parts A–E) was never ticked; the wizard part (Part B) was effectively covered by Sir Jamil's external QA on 16 Sep — see 'QA report' section. Parts C–E remain (task below).
- 12: DONE. Source: OFFERGUIDE_SPRINT9_PLAN_AND_CHECKLIST.md 34/37, OFFERGUIDE_SPRINT9_AUTH_REGRESSION.md. Interim OFFERGUIDE_ADMIN_TOKEN gate removed. Remaining 3 lines are the post-production checks (task below).
- 13: DONE. Source: OFFERGUIDE_SPRINT10_WHAT_I_BUILT.pdf — all six epics, 617 tests passing, TS+ESLint clean. /offerguide/admin with 6 screens; withMongoTransaction() for atomic activate; fixture-diff preview. Two human checks remain (tasks below).
- 14: DONE. Git 2026-09-15..17: 9204ae4, 31d3df0, 7a48621, 5f9ef64, a182cf6. public/offerguide-explainer.mp4 + poster added. v2-no-offerguide-link branch replaced by the build-time flag (README).
- 16: Milestone. Source: Downloads/OfferGuide_QA_Report.pdf. What worked: required-field validation, conditional reveals, live total-comp, full run Profile→Report; '+ Add another offer' (B3) confirmed working, 3-column compare, per-offer report. Dev priority given by QA: B2 > A2 > A1 > B1 > A3/A4/B4 > A5/B5.
- 17: IN PROGRESS — fix present in working tree, NOT committed (branch theme-palettes, git status M). Root cause + fix: useWizardContext.ts now infers the offer instead of creating one on load ('creation is opt-in'); offer/page.tsx no longer mints a second offer on Next; compare/page.tsx removes offers created by mistake. Remaining: commit, test, re-verify repro (clear storage → Continue → /wizard/compare shows only Offer A).
- 18: IN PROGRESS — working tree: compensation/page.tsx placeholder now 'e.g. 150,000' with dimmed style (comment cites QA report A2). Remaining: commit + visual check light/dark.
- 19: IN PROGRESS — working tree: ModuleStepper.tsx rewritten; back steps are Links, forward steps go through onJump (validate → persist → navigate); new useWizardProgress.ts gives green ticks from saved data. Remaining: commit + test jump-past-missing-session redirects.
- 20: IN PROGRESS — working tree: LandingCta.tsx 'Start a new evaluation' link (?session=new), setup/page.tsx honours it, results/page.tsx startNew action. Remaining: commit + confirm the multi-offer Setup path can now be tested from scratch.
- 21: PARTIAL — working tree: useReferenceData.ts caches config fetches, useDraftAutosave.ts drops the extra round trip per transition, api.ts lets the leaving PUT stay in flight, WizardShell.tsx removes the full-page Loading screen. Remaining: measure on og.sanjeeda.io (target < 1.5 s), check server cold-start / Mongo Atlas latency, commit.
- 22: IN PROGRESS — working tree: persistOfferScore.ts now feeds the entered base salary into the Salary category (comment cites QA report B4). Remaining: commit, add regression test (two offers, different base → different Salary score), confirm benchmark row for the tested role/location exists.
- 23: IN PROGRESS — working tree: scr009.ts copy names the offer and why it was chosen. Remaining: commit; consider per-offer selector when > 1 offer.
- 24: Milestone. Items not yet started are scheduled from this date; edit durations as needed.
- 25: OPEN — no fix referenced in code yet. Suspect: the pre-paint theme/palette inline script in src/app/layout.tsx (THEME_STORAGE_KEY moved to lib/portal/theme.ts in the working tree — verify the injected string is valid JS after minification, e.g. an unescaped apostrophe). Repro on production build (next build && next start), not dev.
- 26: OPEN — not reproduced. Check body background vs. offerguide layout surface (G6 in Sprint 6 plan: global body #efefef vs token surface), html/body min-height and the fixed CompensationBar during route transitions.
- 27: 32 modified + 5 untracked files are currently uncommitted on branch theme-palettes (git status). Merge into main after review.
- 28: Run Prisma migrations against production if any; confirm header link present on og.* and absent on sanjeeda.io (README flag).
- 29: Use the repro steps in the QA report. Add the B2 repro (clear storage → Continue → Compare) and the Setup 'Multiple offers' path that could not be tested before.
- 30: Milestone.

| ID | WBS | Task | Type | Duration | Start | Finish | Predecessors | Complete | Remaining | Total slack | Constraint |
| --- | --- | --- | --- | --- | --- | --- | --- | --- | --- | --- | --- |
| 31 | 1.3 | **C. Sprint leftovers — human checks still open** |  | 1d | 2026-09-21 | 2026-09-21 |  |  |  | 0d |  |
| 32 | 1.3.1 | Sprint 8 manual QA sheet — Parts C, D, E (admin gate live, consent capture, sign-off record) |  | 1d | 2026-09-21 | 2026-09-21 | 24 |  |  | 0d |  |
| 33 | 1.3.2 | Sprint 9 — re-run auth regression after production role migration; Part B manual credentials pass; record sign-off |  | 1d | 2026-09-21 | 2026-09-21 | 24 |  |  | 0d |  |
| 34 | 1.3.3 | Sprint 10 — run scripts/check-yesno-count.mjs --prod and confirm 0 before the Questions change ships |  | 1d | 2026-09-21 | 2026-09-21 | 24 |  |  | 0d |  |
| 35 | 1.3.4 | Sprint 10 — visual pass of /offerguide/admin/scoring (draft → preview fixture-diff → activate) on a fresh dev server |  | 1d | 2026-09-21 | 2026-09-21 | 24 |  |  | 0d |  |
| 36 | 1.4 | **D. Known-limitations backlog (README) — optional, not blocking release** |  | 5d | 2026-09-28 | 2026-10-02 |  |  |  | 0d |  |
| 37 | 1.4.1 | Guest data retention policy — TTL / purge for unlinked candidate_profiles |  | 2d | 2026-09-28 | 2026-09-29 | 30 |  |  | 0d |  |
| 38 | 1.4.2 | Email-based guest → account linking (cross-device registration currently orphans guest history) |  | 3d | 2026-09-28 | 2026-09-30 | 30 |  |  | 0d |  |
| 39 | 1.4.3 | Tune weighting layers (importance sliders, evaluation_type bonus) — new OgScoringConfig version via admin UI |  | 3d | 2026-09-28 | 2026-09-30 | 30 |  |  | 0d |  |
| 40 | 1.4.4 | Community market-intelligence data (SCR-009/010 panels show honest empty states until consent opt-ins exist) |  | 5d | 2026-09-28 | 2026-10-02 | 30 |  |  | 0d |  |
| 41 | 1.4.5 | Move currencies from local constants to a /config/currencies endpoint (Sprint 6 gap G4) |  | 1d | 2026-09-28 | 2026-09-28 | 30 |  |  | 0d |  |
| 42 | 2 | **PGP MODULE — Professional Grooming Program (/pgp-access, /pgp-admin, /mentor, /candidate)** |  | 143d | 2026-04-13 A | 2026-10-28 |  | 52% | 68.62d | 0d |  |
| 43 | 2.1 | **A. Built & working — screen-by-screen audit (21 Sep 2026)** |  | 116d | 2026-04-13 A | 2026-09-21 A |  | 100% |  |  |  |
| 44 | 2.1.1 | PGP portals started (separate management / mentor / candidate logins) | milestone | 0d | 2026-04-13 A | 2026-04-13 A |  | 100% |  |  | must start on 2026-04-13 |
| 45 | 2.1.2 | Phase 1 — Original portals: management dashboard, mentor & candidate dashboards, application form, program builder |  | 80d | 2026-04-13 A | 2026-07-31 A | 44 | 100% |  |  |  |
| 46 | 2.1.3 | Phase 2 — PGP APIs: programs-pgp, candidates-pgp, mentors-pgp, attendance, enrollments, documents (GridFS), profile images, auth (JWT cookie + OTP reset) |  | 12d | 2026-08-04 A | 2026-08-19 A | 45 | 100% |  |  | must start on 2026-08-04 |
| 47 | 2.1.4 | Phase 3 — Rework: single /pgp-access sign-in, /pgp-admin behind portal role, mentor approval (Pending→Active), ActivityLog Monitoring, Enrollments & Attendance tabs, ProgramView, PGP templates |  | 8d | 2026-09-08 A | 2026-09-17 A | 46 | 100% |  |  | must start on 2026-09-08 |
| 48 | 2.1.5 | Access › /pgp-access — one sign-in/sign-up form (Candidate self-serve; Mentor gated Pending→Active), forgot-password OTP, reset |  | 1d | 2026-09-18 A | 2026-09-18 A | 47 | 100% |  |  |  |
| 49 | 2.1.6 | Admin › /pgp-admin layout — server-side gate on portal.admin.access + client PgpAdminGuard |  | 1d | 2026-09-18 A | 2026-09-18 A | 47 | 100% |  |  |  |
| 50 | 2.1.7 | Admin › Dashboard tab — KPIs (applications submitted/pending, mentors active/pending, active programs, avg completion) + program-status bar chart |  | 1d | 2026-09-18 A | 2026-09-18 A | 47 | 100% |  |  |  |
| 51 | 2.1.8 | Admin › Mentors tab — list, drawer, edit profile, status Pending/Active/Rejected/Blocked, delete; activatedAt + statusUpdatedAt stamped |  | 1d | 2026-09-18 A | 2026-09-18 A | 47 | 100% |  |  |  |
| 52 | 2.1.9 | Admin › Candidates tab — merged CandidateUser + CandidateApplication, All/Submitted/Pending views, drawer (16 application fields), Documents viewer (GridFS), Assign Program, edit, PDF download |  | 1d | 2026-09-18 A | 2026-09-18 A | 47 | 100% |  |  |  |
| 53 | 2.1.10 | Admin › Programs tab — create/edit Program Master (12 fields) + Weekly Schedule, Session Flow, Capstone Timeline, Portfolio Checklist (20-item template), Evaluation Plan (6-area template, 100%), assign mentor, status Draft/Active/Completed/Paused |  | 1d | 2026-09-18 A | 2026-09-18 A | 47 | 100% |  |  |  |
| 54 | 2.1.11 | Admin › Enrollments tab + /pgp-admin/enrollment/[id] — programs with enrolled students (active vs joined), distinct-candidate & enrollment-row totals |  | 1d | 2026-09-18 A | 2026-09-18 A | 47 | 100% |  |  |  |
| 55 | 2.1.12 | Admin › Attendance tab + /pgp-admin/attendance/[programId] — per-candidate % (lowest first), per-program weekly grid Present/Late/Absent/Excused |  | 1d | 2026-09-18 A | 2026-09-18 A | 47 | 100% |  |  |  |
| 56 | 2.1.13 | Admin › Monitoring tab — mentor activity log (weekly session / capstone / portfolio status changes + mentor account lifecycle), text filter, refresh |  | 1d | 2026-09-18 A | 2026-09-18 A | 47 | 100% |  |  |  |
| 57 | 2.1.14 | Admin › /pgp-admin/program/[id] — read-only program page (Dashboard, Overview, Schedule, Flow, Capstone, Portfolio, Evaluation) via shared ProgramView |  | 1d | 2026-09-18 A | 2026-09-18 A | 47 | 100% |  |  |  |
| 58 | 2.1.15 | Mentor › /mentor/dashboard — assigned programs (status, weeks, portfolio/capstone counts), enrolled students list, stat tiles; Profile tab (photo upload) |  | 1d | 2026-09-18 A | 2026-09-18 A | 47 | 100% |  |  |  |
| 59 | 2.1.16 | Mentor › /mentor/program/[id] › Update Progress — set status of each Weekly Session / Capstone component / Portfolio item (Not Started, In Progress, Completed, Deferred/Delayed) |  | 1d | 2026-09-18 A | 2026-09-18 A | 47 | 100% |  |  |  |
| 60 | 2.1.17 | Mentor › /mentor/program/[id] › Attendance — weekly grid per enrolled student, mark Present/Late/Absent/Excused (upsert, unique per program+email+week) |  | 1d | 2026-09-18 A | 2026-09-18 A | 47 | 100% |  |  |  |
| 61 | 2.1.18 | Mentor › program page read tabs — Dashboard, Overview, Weekly Schedule, Session Flow, Capstone, Portfolio, Evaluation, Students (name/email/gender/qualification/contact) |  | 1d | 2026-09-18 A | 2026-09-18 A | 47 | 100% |  |  |  |
| 62 | 2.1.19 | Candidate › Application Form — 4-step form (email, name, gender, nationality, CNIC, DOB, contact, address, guardian, qualification, recent job, expectations, laptop, internet, confirmation, terms) + Document Uploader (CV, certificates, CNIC, other; 10 MB, 5 per category) |  | 1d | 2026-09-18 A | 2026-09-18 A | 47 | 100% |  |  |  |
| 63 | 2.1.20 | Candidate › Programs tab — browse all programs (mentor, duration, weeks, portfolio/capstone counts), Join / Leave / Make active, open program view |  | 1d | 2026-09-18 A | 2026-09-18 A | 47 | 100% |  |  |  |
| 64 | 2.1.21 | Candidate › Attendance tab — per enrolled program: weekly Present/Late/Absent/Excused, summary %, active program first |  | 1d | 2026-09-18 A | 2026-09-18 A | 47 | 100% |  |  |  |
| 65 | 2.1.22 | Candidate › Profile tab — photo upload/remove (GridFS), account details |  | 1d | 2026-09-18 A | 2026-09-18 A | 47 | 100% |  |  |  |
| 66 | 2.1.23 | Candidate › /candidate/program/[id] — read-only program view: Summary, Overview, Schedule, Flow, Capstone, Portfolio, Evaluation |  | 1d | 2026-09-18 A | 2026-09-18 A | 47 | 100% |  |  |  |
| 67 | 2.1.24 | PGP audit baseline — plan start | milestone | 0d | 2026-09-21 A | 2026-09-21 A |  | 100% |  |  | must start on 2026-09-21 |

Notes:
- 32: OFFERGUIDE_SPRINT8_MANUAL_QA.md: Part B (wizard) is covered by the external QA report; Parts C–E still unticked. Part C must be re-read against Sprint 9 RBAC (x-og-admin-token no longer exists — expect 401/403 by role instead).
- 33: OFFERGUIDE_SPRINT9_PLAN_AND_CHECKLIST.md lines 585–587. Commands: npm run roles -- --list --prod, node scripts/auth-regression.mjs <prod-url>.
- 34: From OFFERGUIDE_SPRINT10_WHAT_I_BUILT.pdf 'what still needs a human'. A stray production yesno document would fail on its next save.
- 35: Endpoints verified against Mongo Atlas; browser render was not confirmed. Also close the Sprint 10 checklist lines 111–118 (manual admin sitting: add question, add benchmark, activate version, see a new session pick it up).
- 37: README: guest rows accumulate indefinitely; WizardDraft has a 30-day TTL but the profile does not.
- 38: README: POST /claim-guest-profile only works via the same-browser cookie.
- 39: Mechanisms live at defaults; needs real data. Use /offerguide/admin/scoring preview before activate.
- 40: Aggregation job over consented candidate data → market panel + community insight card.
- 44: Milestone. Git e25117f 'Initial commit with build' (2026-04-13).
- 45: DONE (Apr–Aug 2026). Git 6999464 (2026-08-03) 'Sync full project: OfferGuide/PGP/Khudi APIs'.
- 46: DONE. Git 1d16c67 (2026-08-19). 22 route files under src/app/api/pgp-{management,mentor,candidate}.
- 47: DONE. Git bfb3ce3 + 8c039dd (2026-09-17). src/models/{MentorUser,CandidateApplication,ActivityLog}.ts consolidated (first-compiled-schema bug fixed for these three).
- 48: AUDIT (as-is) — SAVES: CandidateUser (status Approved) / MentorUser (status Pending). ADMIN SEES: Mentors tab (Pending badge, signup date) ✔; Monitoring tab (ActivityLog 'Pending' account row on mentor signup) ✔; Candidates tab (new user row, applicationStatus Pending) ✔. / GAP: candidate & mentor tokens (candidate_token / mentor_token cookies) are issued but NEVER verified by any API — dashboards gate on localStorage only (proxy.ts comment confirms).
- 49: AUDIT (as-is) — WORKING. Same RBAC as /offerguide/admin; proxy.ts matcher covers /pgp-admin/* and /api/pgp-management/*. Non-admin → /pgp-access, guest → /auth.
- 50: AUDIT (as-is) — READS candidates-pgp, mentors-pgp, programs-pgp. Avg completion = Completed rows across weeklySchedule+portfolio+capstone of all programs (program-level, not per candidate). / GAP: no attendance KPI, no enrollments KPI, no per-program drill-down from the chart.
- 51: AUDIT (as-is) — SAVES: MentorUser + ActivityLog (section 'account'). MONITORING shows every status change ✔. Only Active mentors are offered in Programs › Assigned Mentor ✔. / OK — complete for the approval workflow.
- 52: AUDIT (as-is) — READS both collections. Candidate application data and uploaded documents DO reach this tab ✔. Assigning a program writes assignedProgramId/Name → candidate's Programs & Attendance tabs and mentor's Students list ✔. / GAPS: (1) PATCH never touches CandidateUser.status — admin cannot Block/Reject a candidate account; (2) no 'application decision' (accept/reject) — applicationStatus is only Pending/Submitted; (3) Assign Program does not add to enrolledProgramIds, so the Enrollments tab shows it only via the active field.
- 53: AUDIT (as-is) — SAVES: PGPProgram (Mongo). Mentor dashboard lists programs by assignedMentorId ✔; candidate Programs tab lists ALL programs ✔. / GAPS: (1) no delete / archive / duplicate; (2) frontend Program type carries title + category but the Mongoose schema has neither → silently dropped (category is what a public catalogue needs); (3) ProgramSchema is redefined in 8 route files with different field sets — first compiled wins (the exact bug fixed for MentorUser/CandidateApplication).
- 54: AUDIT (as-is) — READS CandidateApplication.assignedProgramId + enrolledProgramIds. Candidate join/leave/set-active from the Programs tab appears here immediately ✔. / GAPS: read-only — admin cannot remove a candidate from a program, approve a join, or cap seats; candidates can join Draft/Paused programs because /api/pgp-candidate/programs does not filter by status.
- 55: AUDIT (as-is) — READS Attendance collection written by the mentor grid ✔ (same numbers the candidate sees). / GAPS: Attendance tab only counts the ACTIVE program per candidate (enrollments API is used for the list; the summary route filters assignedProgramId only); no export; no date/session stamp beyond week label; attendance marking is not written to ActivityLog so Monitoring never shows it.
- 56: AUDIT (as-is) — READS ActivityLog (last 300). Mentor 'Update Progress' changes and admin status changes arrive here ✔. / GAPS: no candidate events (application submitted, program joined/left, documents uploaded), no attendance events, no admin program edits; API supports ?programId / ?mentorId filters but the UI only has free-text search; capped at 300 rows, no paging/date range.
- 57: AUDIT (as-is) — READS programs-pgp + mentors-pgp. Dashboard view shows completion metrics from the mentor's status updates ✔ (program-level).
- 58: AUDIT (as-is) — READS /api/pgp-mentor/programs?mentorId&email (unauthenticated). Students = candidates whose ACTIVE program is this one. / GAPS: sidebar tabs 'Assigned Candidates' and 'Feedback' are placeholders — both render the Dashboard component; nothing is saved from them.
- 59: AUDIT (as-is) — SAVES: PGPProgram.<section>[i].status + ActivityLog row (mentorId/name/email from localStorage). ADMIN SEES: Monitoring tab ✔, Program Dashboard view ✔, Dashboard avg-completion KPI ✔. CANDIDATE SEES: program view statuses ✔. / GAPS: statuses are PROGRAM-level, not per candidate; portfolio evidenceLink / facilitatorRemarks are not editable by the mentor; no per-candidate evaluation scores despite the Evaluation Plan weightages; route trusts mentorId from the request body (no auth).
- 60: AUDIT (as-is) — SAVES: Attendance collection (markedById/Name). ADMIN SEES: Attendance tab + per-program grid ✔. CANDIDATE SEES: Attendance tab ✔. / GAPS: not logged to ActivityLog; students list uses assignedProgramId only (a candidate enrolled but not 'active' here is invisible to the mentor grid while the admin grid does include them — inconsistent).
- 61: AUDIT (as-is) — READS /api/pgp-mentor/program/[id] (unauthenticated — any programId returns full program + student PII).
- 62: AUDIT (as-is) — SAVES: CandidateApplication (upsert by email) + GridFS candidateDocs. ADMIN SEES: Candidates tab drawer — all fields ✔, Documents view/download ✔, applicationStatus flips to Submitted ✔, Dashboard KPI ✔. / GAPS: no submitted-state lock / edit history; no decision or status feedback to the candidate; not logged to Monitoring; route accepts any email (no auth).
- 63: AUDIT (as-is) — SAVES: CandidateApplication.enrolledProgramIds + assignedProgramId/Name. ADMIN SEES: Enrollments tab ✔, Candidates drawer 'Assigned Program' ✔ (active only), Attendance tab ✔ (active only). MENTOR SEES: students list ✔ (active only). / GAPS: shows Draft/Paused/Completed programs as joinable; no approval step; no category/search; requires login to even see the list — a visitor exploring programs sees nothing.
- 64: AUDIT (as-is) — READS Attendance ✔ consistent with admin & mentor.
- 65: AUDIT (as-is) — SAVES: GridFS profile image. ADMIN SEES: CandidateAvatar in Candidates tab ✔.
- 66: AUDIT (as-is) — READS /api/pgp-candidate/program/[id]. Shows program-level statuses the mentor set ✔. / GAPS: nothing personal — no 'my progress', no submissions, no scores, no feedback, no resources download.
- 67: Milestone. Everything below is scheduled from here; edit durations as you see fit.

| ID | WBS | Task | Duration | Start | Finish | Predecessors | Total slack |
| --- | --- | --- | --- | --- | --- | --- | --- |
| 68 | 2.2 | **B. Fix the gaps found in the audit (data integrity & admin control)** | 5d | 2026-09-21 | 2026-09-25 |  | 0d |
| 69 | 2.2.1 | Consolidate PGPProgram + Attendance schemas into src/models (today: 8 route-local ProgramSchema copies, 4 Attendance copies — first-compiled wins) | 1d | 2026-09-21 | 2026-09-21 | 67 | 0d |
| 70 | 2.2.2 | Program fields: persist `category` (needed for the catalogue) and `title`, or remove them from pgpProgram.ts; add `visibility` (Public/Private) and `seats` | 1d | 2026-09-22 | 2026-09-22 | 69 | 0d |
| 71 | 2.2.3 | Candidate Programs list: only Active (and Public) programs are joinable; Completed/Paused shown read-only; Draft hidden | 1d | 2026-09-23 | 2026-09-23 | 70 | 0d |
| 72 | 2.2.4 | Admin › Candidates: account status control (Approved / Blocked / Rejected) + application decision (Under review / Accepted / Rejected) with reason | 2d | 2026-09-21 | 2026-09-22 | 67 | 0d |
| 73 | 2.2.5 | Admin › Programs: delete / archive + duplicate program (copy schedule, flow, capstone, portfolio, evaluation) | 2d | 2026-09-22 | 2026-09-23 | 69 | 0d |
| 74 | 2.2.6 | Admin › Enrollments: remove candidate from program, approve/decline join requests, seat cap; 'Assign Program' also appends to enrolledProgramIds | 3d | 2026-09-23 | 2026-09-25 | 70 | 0d |
| 75 | 2.2.7 | Monitoring: log candidate events (application submitted, joined/left program, document uploaded), attendance marking, admin program edits; add mentor / program / date filters + paging | 2d | 2026-09-21 | 2026-09-22 | 67 | 0d |
| 76 | 2.2.8 | Attendance consistency: mentor grid and admin summary use the same enrolled set (active + enrolledProgramIds); CSV export | 1d | 2026-09-22 | 2026-09-22 | 69 | 0d |
| 77 | 2.3 | **C. Security — real authentication for candidate & mentor APIs** | 11d | 2026-09-21 | 2026-10-05 |  | 0d |
| 78 | 2.3.1 | Verify candidate_token / mentor_token JWT cookies in every /api/pgp-candidate/* and /api/pgp-mentor/* route (today identity = email or mentorId in the query/body) | 5d | 2026-09-21 | 2026-09-25 | 67 | 0d |
| 79 | 2.3.2 | Ownership checks — mentor may only PATCH status/attendance of programs assigned to them; candidate may only read/write their own application, documents, enrollments | 3d | 2026-09-28 | 2026-09-30 | 78 | 0d |
| 80 | 2.3.3 | Replace localStorage dashboard gates with server-side cookie checks (like /pgp-admin/layout.tsx); redirect to /pgp-access on expiry | 2d | 2026-09-28 | 2026-09-29 | 78 | 0d |
| 81 | 2.3.4 | PGP auth regression suite (vitest) — 401/403 matrix for the 22 routes | 3d | 2026-10-01 | 2026-10-05 | 79, 80 | 0d |
| 82 | 2.4 | **D. Mentor experience — new screens (needed before candidate results can exist)** | 15d | 2026-09-23 | 2026-10-13 |  | 0d |
| 83 | 2.4.1 | Per-candidate progress model (CandidateProgress: programId, email, section, index, status, evidenceLink, remarks) + real 'Assigned Candidates' tab | 5d | 2026-10-01 | 2026-10-07 | 69, 79 | 0d |
| 84 | 2.4.2 | Evaluation grading screen — score each candidate per Evaluation Plan area, weighted total (uses the 6 weightages already stored), publish to candidate | 4d | 2026-10-08 | 2026-10-13 | 83 | 0d |
| 85 | 2.4.3 | Feedback screen — per candidate / per week / per portfolio item; replaces the placeholder 'Feedback' tab | 3d | 2026-10-08 | 2026-10-12 | 83 | 0d |
| 86 | 2.4.4 | Portfolio review — see candidate evidence uploads, set Submitted/Reviewed/Approved, facilitatorRemarks | 3d | 2026-10-08 | 2026-10-12 | 83 | 0d |
| 87 | 2.4.5 | Session notes & attendance remarks per week; log attendance marking to ActivityLog | 2d | 2026-09-23 | 2026-09-24 | 75 | 0d |
| 88 | 2.5 | **E. Candidate experience — new screens & tabs (candidate = primary user; visitors come to explore programs)** | 22d | 2026-09-22 | 2026-10-21 |  | 0d |
| 89 | 2.5.1 | Public Program Catalogue page (/programs) — Active programs, category & duration filters, search, cards with mentor/start date/promise; no login needed | 4d | 2026-09-24 | 2026-09-29 | 70, 71 | 0d |
| 90 | 2.5.2 | Public Program Detail page (/programs/[id]) — overview, curriculum preview (weeks/modules), mentor bio, dates, final output, 'Apply / Join' CTA → /pgp-access?role=candidate | 3d | 2026-09-30 | 2026-10-02 | 89 | 0d |
| 91 | 2.5.3 | Application Status tracker tab — Submitted → Under review → Accepted / Rejected (+ reason), driven by the admin decision | 3d | 2026-09-23 | 2026-09-25 | 72 | 0d |
| 92 | 2.5.4 | Candidate dashboard Home — active program, next session, attendance %, pending portfolio items, latest feedback | 3d | 2026-10-08 | 2026-10-12 | 83 | 0d |
| 93 | 2.5.5 | My Progress tab — per-candidate weekly / capstone / portfolio status (from CandidateProgress), progress bars per section | 4d | 2026-10-08 | 2026-10-13 | 83 | 0d |
| 94 | 2.5.6 | Portfolio Submissions — upload evidence per portfolio item (GridFS, like DocumentUploader), see review status & remarks | 5d | 2026-10-08 | 2026-10-14 | 83 | 0d |
| 95 | 2.5.7 | Evaluation & Results tab — score per evaluation area, weighted total, grade band; visible when mentor publishes | 3d | 2026-10-14 | 2026-10-16 | 84 | 0d |
| 96 | 2.5.8 | Feedback / Messages tab — read mentor feedback per week/item, reply thread | 4d | 2026-10-13 | 2026-10-16 | 85 | 0d |
| 97 | 2.5.9 | Announcements & Notifications — program announcements, session reminders, in-app badge + email | 5d | 2026-09-28 | 2026-10-02 | 78 | 0d |
| 98 | 2.5.10 | Session Resources tab — templates/materials per week (sessionFlow.resourceTemplate + uploads), download | 2d | 2026-09-22 | 2026-09-23 | 69 | 0d |
| 99 | 2.5.11 | Certificate of completion (PDF) when program Completed and evaluation published | 3d | 2026-10-19 | 2026-10-21 | 95 | 0d |
| 100 | 2.5.12 | Recommended programs — cross-module: Khudi / PP assessment results, OfferGuide profile (career stage, target domain) | 4d | 2026-09-30 | 2026-10-05 | 89 | 0d |

Notes:
- 69: Same fix already applied to MentorUser / CandidateApplication / ActivityLog. Routes: programs-pgp, enrollments, attendance, attendance/[programId], pgp-mentor/programs, pgp-mentor/program/[id], status, attendance, pgp-candidate/programs, program/[id], attendance.
- 71: api/pgp-candidate/programs GET has no status filter today.
- 72: candidates-pgp PATCH must update CandidateUser.status; auth route already refuses login when status != Approved. Add applicationStatus enum to CandidateApplication.
- 73: No DELETE route exists for programs. Archive must cascade: block joins, keep attendance history.
- 75: ActivityLog already has the shape; add actorType (mentor/candidate/admin). API already accepts ?programId & ?mentorId.
- 78: proxy.ts header comment: 'The pgp dashboards gate on a localStorage object in the browser, which is not access control.' Options: extend proxy.ts matcher + identity headers, or a requireCandidate()/requireMentor() helper like requireAdmin().
- 83: Today progress is program-level. This unlocks My Progress, Portfolio review, grading and feedback. 'Assigned Candidates' currently renders the Dashboard component.
- 89: Link from main nav 'Services' and the PGP hero. Today a visitor cannot see any program without creating an account.
- 92: Today the dashboard opens on the Application Form; there is no overview.

| ID | WBS | Task | Type | Duration | Start | Finish | Predecessors | Total slack |
| --- | --- | --- | --- | --- | --- | --- | --- | --- |
| 101 | 2.6 | **F. Admin monitoring — new tabs to monitor mentors & candidates end-to-end** |  | 23d | 2026-09-23 | 2026-10-23 |  | 0d |
| 102 | 2.6.1 | Applications review tab — queue of Submitted applications, view documents, Accept / Reject / Under review with reason (feeds the candidate status tracker) |  | 3d | 2026-09-23 | 2026-09-25 | 72 | 0d |
| 103 | 2.6.2 | Evaluations overview tab — grades per program / candidate, mentor grading progress, CSV export |  | 3d | 2026-10-14 | 2026-10-16 | 84 | 0d |
| 104 | 2.6.3 | Portfolio submissions overview — per program, per candidate, review backlog per mentor |  | 2d | 2026-10-13 | 2026-10-14 | 86 | 0d |
| 105 | 2.6.4 | Feedback oversight in Monitoring — read mentor feedback, flag inactivity (no update in N days) |  | 2d | 2026-10-13 | 2026-10-14 | 85 | 0d |
| 106 | 2.6.5 | Reports & exports — candidates, attendance, enrollments, completion (CSV / PDF) |  | 3d | 2026-09-23 | 2026-09-25 | 76 | 0d |
| 107 | 2.6.6 | Certificates issuance & registry (verify by certificate id) |  | 2d | 2026-10-22 | 2026-10-23 | 99 | 0d |
| 108 | 2.6.7 | Announcements composer (admin / mentor → program candidates) |  | 2d | 2026-10-05 | 2026-10-06 | 97 | 0d |
| 109 | 2.7 | **G. QA & release** |  | 10d | 2026-10-15 | 2026-10-28 |  | 0d |
| 110 | 2.7.1 | PGP automated tests — API contract + unit for models, enrollment rules, attendance %, grading math |  | 5d | 2026-10-15 | 2026-10-21 | 81, 84, 94 | 0d |
| 111 | 2.7.2 | Manual QA — candidate, mentor, admin end-to-end (sign-up → apply → accept → join → attendance → progress → grading → certificate) |  | 3d | 2026-10-22 | 2026-10-26 | 110, 91, 95, 96, 102, 103 | 0d |
| 112 | 2.7.3 | Deploy PGP v2 to sanjeeda.io + smoke test |  | 1d | 2026-10-27 | 2026-10-27 | 111, 89, 90, 92, 93, 97, 98, 99, 100, 104, 105, 106, 107, 108, 87, 73, 74 | 0d |
| 113 | 2.7.4 | PGP v2 release | milestone | 0d | 2026-10-28 | 2026-10-28 | 112 | 0d |

Notes:
- 113: Milestone.
